# ProyectoPARQUEADERO

Schedule from MS Project, 2018-02-09 to 2018-10-31, costs in $.

## Calendars

- PROYECTO PARQUEADERO: Mon-Fri 08:00-12:00, 13:00-17:00; Sat-Sun off. Exceptions (off unless hours are given): 2018-03-19 (FESTIVO), 2018-03-29 to 2018-03-30 (FESTIVO), 2018-05-01 (FESTIVO), 2018-05-14 (FESTIVO), 2018-06-04 (FESTIVO), 2018-06-11 (FESTIVO), 2018-07-02 (FESTIVO), 2018-07-20 (FESTIVO), 2018-08-07 (FESTIVO), 2018-08-20 (FESTIVO), 2018-10-15 (FESTIVO).

## Resources

| Resource | Rate |
| --- | --- |
| Formulador de proyecto | 12500 |
| Analista de sistemas | 7500 |
| Analista de riesgos | 11250 |
| Analista de Finaciero | 10000 |
| Analista de Talento humano | 7500 |
| Servidor | 106.25 |
| Computador 4 | 1000 |
| Impresora termica | 2500 |
| Biometrico | 1500 |
| Rollos de papel termico | 30000 |
| Administrador del sistema | 10000 |
| Administrador de base de datos | 9375 |
| Diseñador grafico | 5625 |
| Tecnico en base de datos | 6250 |
| Almacenamiento BackUp (1TB) | 190000 |
| Cable de red 1 Rollo | 30000 |
| Tecnico instalador | 7500 |
| Estacion UPS | 50000 |
| Guayas/Candado | 4000 |
| Instalaciones electricas | 21000 |
| Programa de Base de Datos | 1200000 |
| Tecnico en soporte | 6250 |
| Mobiliario | 110000 |
| Encuestador | 3375 |
| Analista de informacion | 4375 |
| Resma de Papel 500 | 20000 |
| Utiles |  |
| Computador 3 | 1000 |
| Computador 2 | 1000 |
| Computador 1 | 1000 |
| Computador 8 | 1000 |
| Computador 6 | 1000 |
| Computador 5 | 1000 |
| Computador 7 | 1000 |
| Tablero | 150000 |
| Cable de corriente 1 Rollo | 28000 |
| Tecnico en sistemas | 3750 |
| Transporte 2 |  |
| Transporte 1 |  |
| Impresora Laser | 625 |
| Gastos Varios |  |
| Servicios Publicos |  |

## Schedule

| ID | WBS | Task | Duration | Start | Finish | Predecessors | Total slack | Resources | Work | Cost |
| --- | --- | --- | --- | --- | --- | --- | --- | --- | --- | --- |
| 1 | 1 | **PROYECTO PARQUEADERO** | 176d | 2018-02-09 | 2018-10-31 |  | 0d |  | 3520h | 20,452,800 |
| 2 | 1.1 | **ANÁLISIS PRELIMINAR** | 5d | 2018-02-09 | 2018-02-16 |  | 0d |  | 56h | 516,000 |
| 3 | 1.1.1 | Definir la problemática y antecedentes | 3d | 2018-02-09 | 2018-02-14 |  | 0d | Formulador de proyecto | 24h | 300,000 |
| 4 | 1.1.2 | Investigación del sistema actual | 2d | 2018-02-14 | 2018-02-16 | 3 | 0d | Formulador de proyecto; Computador 1 | 32h | 216,000 |
| 5 | 1.2 | **LEVANTAMIENTO DOCUMENTAL** | 9d | 2018-02-16 | 2018-03-01 |  | 0d |  | 128h | 830,000 |
| 6 | 1.2.1 | Ejecución de Encuesta | 2d | 2018-02-16 | 2018-02-20 | 4 | 169d | Encuestador [50%]; Utiles [0.1%]; Transporte 1 [0.1%] | 8h | 47,000 |
| 7 | 1.2.2 | Ejecución de Entrevista | 2d | 2018-02-16 | 2018-02-20 | 4 | 0d | Encuestador [50%] | 8h | 27,000 |
| 8 | 1.2.3 | Estudio de requerimientos | 7d | 2018-02-20 | 2018-03-01 | 7 | 0d | Formulador de proyecto; Computador 2 | 112h | 756,000 |
| 9 | 1.3 | **ANÁLISIS DE COSTOS Y RIESGOS** | 10d | 2018-03-01 | 2018-03-15 |  | 0d |  | 224h | 1,322,000 |
| 10 | 1.3.1 | Identificar los elementos de implantación | 1d | 2018-03-01 | 2018-03-02 | 8 | 0d | Analista de Finaciero; Computador 3 | 16h | 88,000 |
| 11 | 1.3.2 | Evaluar riesgos potenciales y beneficios | 5d | 2018-03-02 | 2018-03-09 | 10 | 0d | Analista de riesgos; Computador 4 | 80h | 490,000 |
| 12 | 1.3.3 | Evaluar tamaño de ejecucion de sistema | 4d | 2018-03-09 | 2018-03-15 | 11 | 0d | Computador 4; Analista de Finaciero; Computador 3; Analista de riesgos | 128h | 744,000 |
| 13 | 1.4 | **ANÁLISIS FINANCIERO** | 6d | 2018-03-15 | 2018-03-26 |  | 0d |  | 96h | 528,000 |
| 14 | 1.4.1 | Compra de material de implantación | 1d | 2018-03-15 | 2018-03-16 | 12 | 0d | Analista de Finaciero; Computador 4 | 16h | 88,000 |
| 15 | 1.4.2 | Evaluar disponibilidad de recursos necesarios | 2d | 2018-03-16 | 2018-03-21 | 14 | 0d | Analista de Finaciero; Computador 4 | 32h | 176,000 |
| 16 | 1.4.3 | Determinar los requisitos financieros | 3d | 2018-03-21 | 2018-03-26 | 15 | 0d | Analista de Finaciero; Computador 4 | 48h | 264,000 |
| 17 | 1.5 | **ANÁLISIS DE RECURSO HUMANO** | 5d | 2018-03-26 | 2018-04-04 |  | 0d |  | 64h | 364,000 |
| 18 | 1.5.1 | Contratación de personal | 3d | 2018-03-26 | 2018-04-02 | 16 | 0d | Analista de Talento humano; Computador 5 | 48h | 204,000 |
| 19 | 1.5.2 | Capacitación de usuarios de nuevo sistema | 2d | 2018-04-02 | 2018-04-04 | 18 | 0d | Administrador del sistema | 16h | 160,000 |
| 20 | 1.6 | **DESARROLLO E IMPLENTACION** | 138d | 2018-04-04 | 2018-10-26 |  | 0d |  | 2840h | 14,251,800 |
| 21 | 1.6.1 | Desarrollo de base de datos | 60d | 2018-04-04 | 2018-07-04 | 19 | 0d | Programa de Base de Datos; Servidor; Tecnico en base de datos; Computador 6 | 1440h | 4,731,000 |
| 22 | 1.6.2 | Cargue base de datos | 2d | 2018-07-04 | 2018-07-06 | 21 | 0d | Programa de Base de Datos; Servidor; Administrador de base de datos; Computador 6; Almacenamiento BackUp (1TB) | 48h | 357,700 |
| 23 | 1.6.3 | Desarrollo de interfaz grafica | 60d | 2018-07-06 | 2018-10-03 | 21, 22 | 0d | Administrador del sistema; Computador 4; Diseñador grafico | 960h | 7,500,000 |
| 24 | 1.6.4 | Ejecución ambiente de pruebas | 3d | 2018-10-03 | 2018-10-08 | 23 | 0d | Programa de Base de Datos; Servidor; Computador 7; Tecnico en sistemas | 72h | 116,550 |
| 25 | 1.6.5 | Ejecución ambiente de producción | 3d | 2018-10-08 | 2018-10-11 | 24 | 0d | Administrador de base de datos; Administrador del sistema; Computador 1; Computador 7; Servidor | 120h | 515,550 |
| 26 | 1.6.6 | Monitoreo y verificación de funcionamiento | 3d | 2018-10-11 | 2018-10-17 | 24, 25 | 0d | Administrador del sistema; Computador 8 | 48h | 264,000 |
| 27 | 1.6.7 | Diseño y producción de Manuales de uso | 4d | 2018-10-17 | 2018-10-23 | 26 | 0d | Computador 2; Resma de Papel 500; Impresora Laser; Tecnico en sistemas | 96h | 192,000 |
| 28 | 1.6.8 | Informes de auditoria | 2d | 2018-10-23 | 2018-10-25 | 26, 27 | 0d | Formulador de proyecto; Impresora Laser; Resma de Papel 500 [50%] | 32h | 220,000 |
| 29 | 1.6.9 | Montaje de equipo servidor en la sede | 1d | 2018-10-25 | 2018-10-26 | 26, 28 | 0d | Cable de red 1 Rollo; Impresora termica; Mobiliario; Tecnico en soporte; Biometrico; Cable de corriente 1 Rollo; Estacion UPS; Guayas/Candado; Instalaciones electricas; Rollos de papel termico | 24h | 355,000 |

| ID | WBS | Task | Duration | Start | Finish | Predecessors | Total slack | Resources | Work | Cost |
| --- | --- | --- | --- | --- | --- | --- | --- | --- | --- | --- |
| 30 | 1.7 | **INFORME FINAL** | 3d | 2018-10-26 | 2018-10-31 |  | 0d |  | 112h | 2,641,000 |
| 31 | 1.7.1 | Imprimir informe de evaluación | 1d | 2018-10-26 | 2018-10-29 | 29 | 0d | Computador 3; Impresora Laser; Resma de Papel 500 [50%]; Tecnico en sistemas | 24h | 53,000 |
| 32 | 1.7.2 | Sustentación del proyecto | 1d | 2018-10-29 | 2018-10-30 | 31 | 0d | Formulador de proyecto | 8h | 100,000 |
| 33 | 1.7.3 | Reuniones administrativas | 1d | 2018-10-30 | 2018-10-31 | 32 | 0d | Computador 1; Formulador de proyecto; Gastos Varios [0.1%]; Administrador de base de datos; Administrador del sistema; Analista de Finaciero; Analista de informacion; Analista de riesgos; Analista de sistemas; Analista de Talento humano; Tecnico en base de datos; Tablero; Servicios Publicos [0.1%] | 80h | 2,488,000 |
